# process_1

How a schedule from ProjectLibre changed from version to version. A marks actual dates.

## Version 1 (saved 2026-06-07)

| ID | WBS | Task | Duration | Start | Finish | Predecessors |
| --- | --- | --- | --- | --- | --- | --- |
| 1 | 1 | **КОРПОРАТИВНАЯ СИСТЕМА (БАЗОВЫЙ ЭТАП)** | 27d | 2026-05-25 | 2026-06-30 |  |
| 2 | 1.1 | **Управление и инициация** | 3d | 2026-05-25 | 2026-05-27 |  |
| 3 |  | Разработка и утверждение Устава проекта | 2d | 2026-05-25 | 2026-05-26 |  |
| 4 |  | Проведение установочного совещания (Kick-off) | 1d | 2026-05-27 | 2026-05-27 | 3 |
| 5 |  | Веха: Проект официально запущен | 0d | 2026-05-27 | 2026-05-27 | 4 |
| 6 | 1.2 | **Аналитика и проектирование (ТЗ)** | 9d | 2026-05-28 | 2026-06-09 |  |
| 7 |  | Проведение интервью с ключевыми пользователями | 3d | 2026-05-28 | 2026-06-01 | 5 |
| 8 |  | Формирование требований и написание ТЗ | 4d | 2026-06-02 | 2026-06-05 | 7 |
| 9 |  | Согласование ТЗ с Заказчиком (Итерация 1) | 2d | 2026-06-08 | 2026-06-09 | 8 |
| 10 |  | Веха: Техническое задание утверждено | 0d | 2026-06-09 | 2026-06-09 | 9 |
| 11 | 1.3 | **Разработка базового функционала** | 9d | 2026-06-10 | 2026-06-22 |  |
| 12 |  | Проектирование архитектуры и схемы БД | 3d | 2026-06-10 | 2026-06-12 | 10 |
| 13 |  | Разработка серверной логики и API ядра | 6d | 2026-06-15 | 2026-06-22 | 12 |
| 14 |  | Верстка базового пользовательского интерфейса | 4d | 2026-06-15 | 2026-06-18 | 12 |
| 15 | 1.4 | **Тестирование и Стабилизация ядра** | 15d | 2026-06-10 | 2026-06-30 |  |
| 16 |  | Разработка тест-кейсов и сценариев | 2d | 2026-06-10 | 2026-06-11 | 10 |
| 17 |  | Функциональное тестирование системы | 4d | 2026-06-23 | 2026-06-26 | 13, 14 |
| 18 |  | Исправление дефектов (Bugfixing) | 2d | 2026-06-29 | 2026-06-30 | 17 |
| 19 |  | Веха: Базовая система стабилизирована | 0d | 2026-06-30 | 2026-06-30 | 18 |
| 20 | 2 | **УПРАВЛЕНИЕ ИЗМЕНЕНИЯМИ: МОДУЛЬ ОТЧЕТНОСТИ (CR-001)** | 18d | 2026-07-01 | 2026-07-24 |  |
| 21 |  | Анализ влияния запроса (Impact Analysis) и оценка рисков | 1d | 2026-07-01 | 2026-07-01 | 19 |
| 22 |  | Заседание Управляющего комитета и подписание Доп. соглашения | 1d | 2026-07-02 | 2026-07-02 | 21 |
| 23 |  | Проектирование структуры данных и витрин отчетов | 3d | 2026-07-03 | 2026-07-07 | 22 |
| 24 |  | Разработка ETL-скриптов агрегации данных | 4d | 2026-07-08 | 2026-07-13 | 23 |
| 25 |  | Программирование макетов отчетов и экспорта в Excel/PDF | 4d | 2026-07-14 | 2026-07-17 | 24 |
| 26 |  | Комплексное интеграционное тестирование отчетности | 4d | 2026-07-20 | 2026-07-23 | 25 |
| 27 |  | Приемо-сдаточные испытания (ПСИ) всей системы | 1d | 2026-07-24 | 2026-07-24 | 26 |
| 28 |  | Веха: Проект завершен с учетом CR-001 (Финиш) | 0d | 2026-07-24 | 2026-07-24 | 27 |

## Version 2 (saved 2026-06-16)

Last finish 2026-07-24 → 2026-07-20 (-4d).

Changed:

| ID | Task | Start | Finish | Duration | Other |
| --- | --- | --- | --- | --- | --- |
| 20 | **УПРАВЛЕНИЕ ИЗМЕНЕНИЯМИ: МОДУЛЬ ОТЧЕТНОСТИ (CR-001)** |  | 2026-07-24 → 2026-07-20 (-4d) | 18d → 14d |  |
| 21 | Анализ влияния запроса (Impact Analysis) и оценка рисков |  |  |  | resources Руководитель проекта (PM); Старший Бизнес-аналитик → Старший Бизнес-аналитик |
| 22 | Заседание Управляющего комитета и подписание Доп. соглашения |  |  |  | resources Руководитель проекта (PM) → Руководитель проекта (PM) [30%] |
| 23 | Проектирование структуры данных и витрин отчетов |  |  |  | resources Архитектор систем → Архитектор систем [50%] |
| 24 | Разработка ETL-скриптов агрегации данных |  | 2026-07-13 → 2026-07-10 (-3d) | 4d → 3d | resources Ведущий разработчик (Backend) → Ведущий разработчик (Backend) [25%] |
| 25 | Программирование макетов отчетов и экспорта в Excel/PDF | 2026-07-14 → 2026-07-13 (-1d) | 2026-07-17 → 2026-07-14 (-3d) | 4d → 2d | resources Разработчик интерфейсов (Frontend) → Разработчик интерфейсов (Frontend) [30%] |
| 26 | Комплексное интеграционное тестирование отчетности | 2026-07-20 → 2026-07-15 (-5d) | 2026-07-23 → 2026-07-16 (-7d) | 4d → 2d | resources Инженер по тестированию (QA) → Инженер по тестированию (QA) [30%] |
| 27 | Приемо-сдаточные испытания (ПСИ) всей системы | 2026-07-24 → 2026-07-17 (-7d) | 2026-07-24 → 2026-07-20 (-4d) | 1d → 2d | resources Руководитель проекта (PM); Инженер по тестированию (QA) → Инженер по тестированию (QA) [70%] |
| 28 | Веха: Проект завершен с учетом CR-001 (Финиш) | 2026-07-24 → 2026-07-20 (-4d) | 2026-07-24 → 2026-07-20 (-4d) |  |  |
